How a schedule from an exported table changed from version to version. A marks actual dates.

## Version 1 (saved 2026-01-21)

Note of the change: feat: Add formatting, Instructions sheet, and By Assignee view

| ID | Task | Start | Finish |
| --- | --- | --- | --- |
| propane-line-remediation | ↳ Propane Line Remediation | 2026-01-23 | 2026-01-23 |
| verify-install-time | ↳ Verify Install Time | 2026-01-27 | 2026-01-27 |
| schedule-finish-plumbing | ↳ Schedule Finish Plumbing |  |  |
| schedule-baseboard-install | ↳ Schedule Baseboard Install | 2026-01-26 | 2026-01-26 |
| schedule-electrical-signoff | ↳ Schedule Electrical Sign-off | 2026-01-26 | 2026-01-26 |
| schedule-siding | ↳ Schedule Siding |  |  |
| inspection | Inspection |  |  |
| schedule-town-manteo | ↳ Schedule Town of Manteo |  |  |
| schedule-dare-county-health | ↳ Schedule Dare County Health |  |  |
| town-manteo-inspection | ↳ Town of Manteo |  |  |
| dare-county-health-inspection | ↳ Dare County Health |  |  |
| schedule-upper-cabinet-install | ↳ Schedule Installation | 2026-01-26 | 2026-01-26 |
| close-permit | Close Building Permit |  |  |
| schedule-final-punch | ↳ Schedule Final Punch Walkthrough |  |  |
| punch-remediation | ↳ Punch List Remediation |  |  |
| final-clean | ↳ Final Clean |  |  |
| finish-plumbing | Finish Plumbing |  |  |
| finish-plumbing-work | ↳ Finish Plumbing |  |  |
| install-handsink-laundry | ↳ Install Existing Handsink in Laundry Room |  |  |
| finish-electrical | Finish Electrical | 2026-01-26 | 2026-01-26 |
| electrical-signoff | ↳ Electrical Sign-off | 2026-01-26 | 2026-01-26 |
| crest-installation | Crest Installation | 2026-01-27 | 2026-01-27 |
| build-back-deck | Build Back Deck with Ramp |  |  |
| remove-old-porch | Remove Old Porch Steps and Posts |  |  |
| final-punch-walkthrough | ↳ Final Punch Walkthrough |  |  |
| final-acceptance | ↳ Final Acceptance |  |  |
| move-mop-sink-receptacle | ↳ Move Receptacle Over Mop Sink | 2026-01-26 | 2026-01-26 |
| install-coach-lamp | ↳ Install Coach Lamp | 2026-01-26 | 2026-01-26 |
| install-light-string-receptacle | ↳ Install Receptacle for Light Strings | 2026-01-26 | 2026-01-26 |
| add-tv-receptacle | ↳ Add Receptacle for TV Over Passthrough | 2026-01-26 | 2026-01-26 |
| finish-lighting-install | ↳ Finish Lighting Install | 2026-01-26 | 2026-01-26 |
| connect-passthrough-heat-lamp | ↳ Connect Passthrough Heat Lamp | 2026-01-26 | 2026-01-26 |
| install-propane-line | ↳ Install Propane Line for Gas Range | 2026-01-23 | 2026-01-23 |
| install-dishwasher | ↳ Install Dishwasher |  |  |
| finish-trim | Finish Trim | 2026-01-21 | 2026-01-23 |
| trim-passthrough | ↳ Trim Passthrough | 2026-01-21 | 2026-01-23 |
| adjust-hallway-openings | ↳ Adjust Hallway Opening Heights | 2026-01-21 | 2026-01-23 |
| kitchen-crown-molding | ↳ Kitchen Crown Molding | 2026-01-21 | 2026-01-23 |
| laundry-crown-molding | ↳ Laundry Crown Molding | 2026-01-21 | 2026-01-23 |
| kitchen-main-door-casing | ↳ Kitchen Main Door Casing | 2026-01-21 | 2026-01-23 |
| baseboard-install-scupernong | ↳ Install Baseboard in Scupernong | 2026-01-21 | 2026-01-23 |
| painting | Painting | 2026-01-23 | 2026-01-23 |
| paint-kitchen | ↳ Paint Kitchen | 2026-01-23 | 2026-01-23 |
| paint-scupernong | ↳ Paint Scupernong | 2026-01-23 | 2026-01-23 |
| paint-lobby-passthrough | ↳ Paint Lobby Passthrough Wall | 2026-01-23 | 2026-01-23 |
| paint-doors | ↳ Paint Doors (Kitchen Main, Back, HVAC) | 2026-01-23 | 2026-01-23 |
| touch-up-ceiling | ↳ Touch Up Ceiling Damage (as needed) | 2026-01-23 | 2026-01-23 |
| finish-drywall | Finish Drywall | 2026-01-23 | 2026-01-23 |
| finish-drywall-kitchen | ↳ Finish Drywall Kitchen | 2026-01-23 | 2026-01-23 |
| finish-drywall-scupernong | ↳ Finish Drywall Scupernong | 2026-01-23 | 2026-01-23 |
| install-stainless-wall | Install Stainless Wall Covering (Right of Range) | 2026-01-23 | 2026-01-23 |
| kitchen-baseboard | Kitchen Baseboard | 2026-01-26 | 2026-01-26 |
| baseboard-install | ↳ Baseboard Install | 2026-01-26 | 2026-01-26 |
| hvac-registers | HVAC Lower Registers | 2026-01-22 | 2026-01-22 |
| siding | Siding |  |  |
| siding-work | ↳ Siding |  |  |
| install-doors | Install Doors |  |  |
| main-kitchen-door | ↳ Main Kitchen Door |  |  |
| install-back-door | ↳ Install Back Door |  |  |
| hvac-door | ↳ HVAC Door |  |  |
| crest-prep | Crest Prep / Cleaning | 2026-01-26 | 2026-01-26 |
| propane | Propane | 2026-01-23 | 2026-01-23 |
| kitchen-put-back | Kitchen Put-Back |  |  |
| install-ovens | ↳ Install Ovens |  |  |
| move-appliances | ↳ Move Range, Freezers and Refrigerators |  |  |
| misc-equipment-install | Misc Equipment Install |  |  |
| install-pot-rack | ↳ Install Pot Rack |  |  |
| install-retractable-extension-cord | ↳ Install Retractable Extension Cord |  |  |
| upper-cabinet-install | Upper Cabinet Install | 2026-01-26 | 2026-01-26 |
| upper-cabinet-delivery | ↳ Upper Cabinet Delivery | 2026-01-22 | 2026-01-22 |

| ID | Task | Start | Finish |
| --- | --- | --- | --- |
| install-upper-cabinets | ↳ Install Upper Cabinets | 2026-01-26 | 2026-01-26 |
| project-finish | Project Finish |  |  |

## Version 2 (saved 2026-01-21)

Note of the change: feat: Add material question lifecycle rules

Last finish stays 2026-01-27.

Added:

| ID | Task | Start | Finish |
| --- | --- | --- | --- |
| triple-window-header-trim | ↳ Change header trim over triple window to match other window | 2026-01-21 | 2026-01-23 |
| install-dryer-vents | Install Dryer Vents |  |  |

## Version 3 (saved 2026-01-22)

Note of the change: feat: Add unified issues system with action categories

Last finish stays 2026-01-27.

Added:

| ID | Task | Start | Finish |
| --- | --- | --- | --- |
| framing | Framing |  |  |
| framing-1 | ↳ Adjust kitchen to pantry hallway opening |  |  |
| framing-2 | ↳ Adjust pantry to back door hallway opening |  |  |
| finish-drywall-3 | ↳ Finish drywall around back door | 2026-01-23 | 2026-01-23 |
| finish-drywall-4 | ↳ Drywall patch two light holes in Scupernong | 2026-01-23 | 2026-01-23 |
| install-hvac-registers | Install HVAC Registers |  |  |

Changed:

| ID | Task | Start | Finish |
| --- | --- | --- | --- |
| finish-trim | Finish Trim | 2026-01-21 → 2026-01-23 (+2d) | 2026-01-23 → 2026-01-24 (+1d) |
| finish-trim-1 | ↳ Trim Passthrough | 2026-01-21 → 2026-01-23 (+2d) | 2026-01-23 → 2026-01-24 (+1d) |
| finish-trim-2 | ↳ Adjust Hallway Opening Heights | 2026-01-21 → 2026-01-23 (+2d) | 2026-01-23 → 2026-01-24 (+1d) |
| finish-trim-3 | ↳ Kitchen Crown Molding | 2026-01-21 → 2026-01-23 (+2d) | 2026-01-23 → 2026-01-24 (+1d) |
| finish-trim-4 | ↳ Laundry Crown Molding | 2026-01-21 → 2026-01-23 (+2d) | 2026-01-23 → 2026-01-24 (+1d) |
| finish-trim-5 | ↳ Kitchen Main Door Casing | 2026-01-21 → 2026-01-23 (+2d) | 2026-01-23 → 2026-01-24 (+1d) |
| finish-trim-6 | ↳ Install Baseboard in Scupernong | 2026-01-21 → 2026-01-23 (+2d) | 2026-01-23 → 2026-01-24 (+1d) |
| finish-trim-7 | ↳ Change header trim over triple window to match other window | 2026-01-21 → 2026-01-23 (+2d) | 2026-01-23 → 2026-01-24 (+1d) |

## Version 4 (saved 2026-01-22)

Note of the change: chore: Update drywall tasks and regenerate exports

Last finish stays 2026-01-27.

Added:

| ID | Task |
| --- | --- |
| hvac-finish | Schedule HVAC Finish |

Changed:

| ID | Task | Start | Finish |
| --- | --- | --- | --- |
| framing | Framing | none → 2026-01-22 | none → 2026-01-22 |
| framing-1 | ↳ Adjust kitchen to pantry hallway opening | none → 2026-01-22 | none → 2026-01-22 |
| framing-2 | ↳ Adjust pantry to back door hallway opening | none → 2026-01-22 | none → 2026-01-22 |

## Version 5 (saved 2026-01-23)

Note of the change: chore: Run export-tracker workflow and sync spreadsheet

Last finish stays 2026-01-27.

Changed:

| ID | Task | Start | Finish |
| --- | --- | --- | --- |
| finish-drywall | Finish Drywall | 2026-01-23 → 2026-01-22 (-1d) | 2026-01-23 → 2026-01-22 (-1d) |
| finish-drywall-1 | ↳ Finish Drywall Kitchen | 2026-01-23 → 2026-01-22 (-1d) | 2026-01-23 → 2026-01-22 (-1d) |
| finish-drywall-2 | ↳ Finish Drywall Scupernong | 2026-01-23 → 2026-01-22 (-1d) | 2026-01-23 → 2026-01-22 (-1d) |
| finish-drywall-3 | ↳ Finish drywall around back door | 2026-01-23 → 2026-01-22 (-1d) | 2026-01-23 → 2026-01-22 (-1d) |
| finish-drywall-4 | ↳ Drywall patch two light holes in Scupernong | 2026-01-23 → 2026-01-22 (-1d) | 2026-01-23 → 2026-01-22 (-1d) |
